Schedule from MS Project, 2019-01-02 to 2020-05-01, 7.5 hours a day, costs in €.
Universidad Politécnica de Valencia

## Calendars

- Estándar: Mon-Fri 09:00-13:00, 15:00-19:00; Sat-Sun off.
- Mi calendario GDP: Mon-Fri 09:00-16:30; Sat-Sun off. Exceptions (off unless hours are given): 2019-03-19 (San José), 2019-10-09 (9 de Octubre), 2019-11-01 (1 de Noviembre), 2019-12-25 (Navidad).

## Resources

| Resource | Group | Rate |
| --- | --- | --- |
| DESARROLLADOR1 | Desarrolladores | 12 |
| DESARROLLADOR2&3 | Desarrolladores | 24 |
| Team leader | Leaders | 20 |
| Analistas1&2 | Analistas | 18 |
| Diseñador | Diseñadores | 18 |
| Equipos de trabajo | Hardware | 10000 |
| Licencias | Software | 4000 |

## Schedule

| ID | WBS | Task | Type | Duration | Start | Finish | Predecessors | Total slack | Free slack | Calendar | Resources | Work | Cost |
| --- | --- | --- | --- | --- | --- | --- | --- | --- | --- | --- | --- | --- | --- |
| 1 | 0 | **WBS Element** |  | 343.31d | 2019-01-02 | 2020-05-01 |  | 0d |  | Mi calendario GDP |  | 4630.44h | 104,097.59 |
| 2 | 1 | **Proyecto** |  | 343.31d | 2019-01-02 | 2020-05-01 |  | 0d |  | Mi calendario GDP |  | 4630.44h | 104,097.59 |
| 3 | 1.1 | **Fase de Análisis 15%** |  | 39.97d | 2019-01-02 | 2019-02-26 |  | 0d |  | Mi calendario GDP |  | 675.43h | 12,551.59 |
| 4 | 1.1.1 | **Elicitación 30%** |  | 9.8d | 2019-01-02 | 2019-01-15 |  | 0d |  | Mi calendario GDP |  | 220.5h | 4,116 |
| 5 | 1.1.1.1 | Inputs cliente/usuarios 10% |  | 5.25h | 2019-01-02 | 2019-01-02 |  | 0d |  | Mi calendario GDP | Analistas1&2 [200%]; Team leader | 15.75h | 294 |
| 6 | 1.1.1.2 | Observación sistema actual 20% |  | 10.5h | 2019-01-02 | 2019-01-04 | 5 | 0d |  | Mi calendario GDP | Analistas1&2 [200%]; Team leader | 31.5h | 588 |
| 7 | 1.1.1.1.3 | Resumen actas reuniones y dossier de observaciones | milestone | 0h | 2019-01-04 | 2019-01-04 | 6 | 341.21d |  | Mi calendario GDP |  |  |  |
| 8 | 1.1.1.3 | Negociación 30% |  | 15.75h | 2019-01-04 | 2019-01-08 | 6 | 0d |  | Mi calendario GDP | Analistas1&2 [200%]; Team leader | 47.25h | 882 |
| 9 | 1.1.1.1.5 | Documento de visión | milestone | 0h | 2019-01-08 | 2019-01-08 | 8 | 339.11d |  | Mi calendario GDP | Analistas1&2 [200%] |  |  |
| 10 | 1.1.1.4 | Determinación de RF y RNF 30% |  | 31.5h | 2019-01-08 | 2019-01-14 | 8 | 0d |  | Mi calendario GDP | Analistas1&2 [200%]; Team leader | 94.5h | 1,764 |
| 11 | 1.1.1.1.7 | Documento de alcance | milestone | 0h | 2019-01-14 | 2019-01-14 | 10 | 334.91d |  | Mi calendario GDP | Analistas1&2 [200%] |  |  |
| 12 | 1.1.1.5 | Priorización de objetivos 10% |  | 10.5h | 2019-01-14 | 2019-01-15 | 10 | 0d |  | Mi calendario GDP | Analistas1&2 [200%]; Team leader | 31.5h | 588 |
| 13 | 1.1.1.1.9 | Lista priorizada de R | milestone | 0h | 2019-01-15 | 2019-01-15 | 12 | 333.51d |  | Mi calendario GDP |  |  |  |
| 14 | 1.1.2 | **Análisis 40%** |  | 11.2d | 2019-01-15 | 2019-01-30 |  | 0d |  | Mi calendario GDP |  | 210h | 3,948 |
| 15 | 1.1.2.1 | Identificación RF y RNF 40% |  | 42h | 2019-01-15 | 2019-01-23 | 12 | 0d |  | Mi calendario GDP | Analistas1&2 [200%]; Team leader | 84h | 1,596 |
| 16 | 1.1.2.2 | Priorización RF 15% |  | 42h | 2019-01-23 | 2019-01-30 | 15 | 322.31d |  | Mi calendario GDP | Analistas1&2; Team leader [50%] | 31.5h | 609 |
| 17 | 1.1.2.3 | Análisis arquitectura 15% |  | 15.75h | 2019-01-21 | 2019-01-23 | 15FF | 0d |  | Mi calendario GDP | Analistas1&2 [200%] | 31.5h | 567 |
| 18 | 1.1.2.4 | Realización de diagramas 30% |  | 42h | 2019-01-23 | 2019-01-30 | 17 | 0d |  | Mi calendario GDP | Analistas1&2; Team leader [50%] | 63h | 1,176 |
| 19 | 1.1.1.2.5 | Modelos y diagramas de análisis | milestone | 0h | 2019-01-30 | 2019-01-30 | 18 | 322.31d |  | Mi calendario GDP |  |  |  |
| 20 | 1.1.3 | **Validación 30%** |  | 18.97d | 2019-01-31 | 2019-02-26 |  | 0d |  | Mi calendario GDP |  | 244.94h | 4,487.59 |
| 21 | 1.1.3.1 | Definición de la validación RF 30% |  | 71.17h | 2019-01-31 | 2019-02-13 | 18 | 0d |  | Mi calendario GDP | Analistas1&2 | 71.17h | 1,281.15 |
| 22 | 1.1.3.2 | Definición de la integración 10% |  | 7.88h | 2019-02-13 | 2019-02-14 | 21 | 0d |  | Mi calendario GDP | Team leader | 7.88h | 157.5 |
| 23 | 1.1.3.3 | Definición de medidas de aseguramiento de la calidad 15% |  | 23.63h | 2019-01-31 | 2019-02-05 | 21SS | 303.35d | 0d | Mi calendario GDP | Team leader | 23.63h | 472.6 |
| 24 | 1.1.3.4 | Definición de la validación de la arquitectura 15% |  | 31.51h | 2019-02-14 | 2019-02-20 | 22 | 0d |  | Mi calendario GDP | Analistas1&2 [50%]; Team leader | 23.63h | 441.09 |
| 25 | 1.1.1.3.5 | Integración de acciones específicas sobre el desarrollo y mitigación de riesgos en el Plan de calidad | milestone | 0h | 2019-02-05 | 2019-02-05 | 23 | 303.35d | 0d | Mi calendario GDP |  |  |  |
| 26 | 1.1.1.3.6 | Documento de validación | milestone | 0h | 2019-02-20 | 2019-02-20 | 24 | 307.57d |  | Mi calendario GDP |  |  |  |
| 27 | 1.1.3.5 | Definición de la migración 30% |  | 118.62h | 2019-02-05 | 2019-02-26 | 25 | 303.35d | 0d | Mi calendario GDP | Analistas1&2 | 118.62h | 2,135.25 |
| 28 | 1.1.1.3.8 | Documento de migración | milestone | 0h | 2019-02-26 | 2019-02-26 | 27 | 303.35d |  | Mi calendario GDP |  |  |  |

| ID | WBS | Task | Type | Duration | Start | Finish | Predecessors | Total slack | Free slack | Calendar | Resources | Work | Cost |
| --- | --- | --- | --- | --- | --- | --- | --- | --- | --- | --- | --- | --- | --- |
| 29 | 1.2 | **Fase de Diseño 15%** |  | 64.75d | 2019-02-20 | 2019-05-23 |  | 0d |  | Mi calendario GDP | Equipos de trabajo | 761.25h | 24,542.5 |
| 30 | 1.2.1 | Selección de técnicas 5% |  | 13.12h | 2019-02-20 | 2019-02-22 | 24 | 0d |  | Mi calendario GDP | Diseñador; Team leader | 26.25h | 498.75 |
| 31 | 1.1.2.2 | Documento de métodos/técnicas | milestone | 0h | 2019-02-22 | 2019-02-22 | 30 | 305.82d | 28d | Mi calendario GDP |  |  |  |
| 32 | 1.2.2 | Diseño de la interfaz de usuario 30% |  | 210h | 2019-02-22 | 2019-04-04 | 30 | 0d |  | Mi calendario GDP | Diseñador [75%]; Team leader | 315h | 5,985 |
| 33 | 1.1.2.4 | Prototipos | milestone | 0h | 2019-04-04 | 2019-04-04 | 32 | 91.39d | 0d | Mi calendario GDP |  |  |  |
| 34 | 1.1.2.5 | Interfaz HTML | milestone | 0h | 2019-04-04 | 2019-04-04 | 33 | 277.82d | 0d | Mi calendario GDP |  |  |  |
| 35 | 1.1.2.6 | Reglas de diseño - Calidad | milestone | 0h | 2019-04-04 | 2019-04-04 | 25, 31, 33, 34 | 277.82d |  | Mi calendario GDP |  |  |  |
| 36 | 1.2.3 | Diseño de datos 25% |  | 131.25h | 2019-04-04 | 2019-04-29 | 33 | 91.39d | 0d | Mi calendario GDP | Diseñador | 131.25h | 2,362.5 |
| 37 | 1.2.4 | Diseño de la arquitectura 20% |  | 210h | 2019-04-04 | 2019-05-14 | 32 | 0d |  | Mi calendario GDP | Team leader | 210h | 4,200 |
| 38 | 1.1.2.9 | Diagramas BD | milestone | 0h | 2019-04-29 | 2019-04-29 | 36 | 91.39d | 17.5d | Mi calendario GDP |  |  |  |
| 39 | 1.1.2.10 | Diagramas de arquitectura | milestone | 0h | 2019-05-14 | 2019-05-14 | 37 | 73.89d | 0d | Mi calendario GDP |  |  |  |
| 40 | 1.2.5 | Diseño de módulos 10% |  | 26.25h | 2019-05-14 | 2019-05-17 | 37 | 0d |  | Mi calendario GDP | Diseñador [50%]; Team leader [50%] | 26.25h | 498.75 |
| 41 | 1.1.2.12 | Diseño de los circuitos de prueba 10% |  | 52.5h | 2019-05-14 | 2019-05-23 | 39 | 78.82d | 0d |  | Team leader [50%]; Diseñador [50%] | 52.5h | 997.5 |
| 42 | 1.1.2.13 | Diagramas de interfaces | milestone | 0h | 2019-05-23 | 2019-05-23 | 40, 41 | 73.89d | 0d | Mi calendario GDP |  |  |  |
| 43 | 1.3 | **Fase de Implementación 35%** |  | 144.43d | 2019-05-17 | 2019-12-10 |  | 0d |  | Mi calendario GDP | Licencias | 1898.75h | 42,906 |
| 44 | 1.3.1 | **Módulo 1 60%** |  | 93.1d | 2019-05-17 | 2019-09-26 |  | 0d |  | Mi calendario GDP |  | 1359.75h | 32,046 |
| 45 | 1.3.1.1 | Impl. Requisitos prioridad 1 40% |  | 147h | 2019-05-17 | 2019-06-14 | 40 | 0d |  | Mi calendario GDP | DESARROLLADOR2&3 [200%] | 294h | 7,056 |
| 46 | 1.1.3.1.2 | Modelo funcional 1 | milestone | 0h | 2019-06-14 | 2019-06-14 | 45 | 226.72d |  | Mi calendario GDP |  |  |  |
| 47 | 1.3.1.2 | Impl. Requisitos prioridad 2 30% |  | 147h | 2019-06-14 | 2019-07-12 | 45 | 0d |  | Mi calendario GDP | DESARROLLADOR2&3 [200%]; Team leader | 441h | 9,996 |
| 48 | 1.1.3.1.4 | Modelo funcional 2 | milestone | 0h | 2019-07-12 | 2019-07-12 | 47 | 207.12d |  | Mi calendario GDP |  |  |  |
| 49 | 1.3.1.3 | Impl. Requisitos prioridad 3 20% |  | 220.5h | 2019-07-12 | 2019-08-22 | 47 | 0d |  | Mi calendario GDP | DESARROLLADOR2&3 [200%] | 441h | 10,584 |
| 50 | 1.1.3.1.6 | Modelo funcional 3 | milestone | 0h | 2019-08-22 | 2019-08-22 | 49 | 177.72d |  | Mi calendario GDP |  |  |  |
| 51 | 1.3.1.4 | Impl. Requisitos prioridad 4 10% |  | 183.75h | 2019-08-22 | 2019-09-26 | 49 | 0d |  | Mi calendario GDP | DESARROLLADOR2&3 | 183.75h | 4,410 |
| 52 | 1.1.3.1.8 | Modelo funcional 4 | milestone | 0h | 2019-09-26 | 2019-09-26 | 51 | 153.22d |  | Mi calendario GDP |  |  |  |

| ID | WBS | Task | Type | Duration | Start | Finish | Predecessors | Total slack | Free slack | Calendar | Resources | Work | Cost |
| --- | --- | --- | --- | --- | --- | --- | --- | --- | --- | --- | --- | --- | --- |
| 53 | 1.3.2 | **Módulo 2 40%** |  | 140.93d | 2019-05-23 | 2019-12-10 |  | 73.89d |  | Mi calendario GDP |  | 539h | 6,860 |
| 54 | 1.3.2.1 | Impl. Requisitos prioridad 1 20% |  | 73.5h | 2019-05-23 | 2019-06-11 | 38, 39, 42 | 73.42d | 0d | Mi calendario GDP | DESARROLLADOR1; Team leader | 98h | 1,568 |
| 55 | 1.1.3.2.2 | Modelo funcional 1 | milestone | 0h | 2019-06-11 | 2019-06-11 | 54 | 73.42d | 0d | Mi calendario GDP |  |  |  |
| 56 | 1.3.2.2 | Impl. Requisitos prioridad 2 30% |  | 220.5h | 2019-06-11 | 2019-08-27 | 55 | 73.42d | 0d | Mi calendario GDP | DESARROLLADOR1 | 147h | 1,764 |
| 57 | 1.1.3.2.4 | Modelo funcional 2 | milestone | 0h | 2019-08-27 | 2019-08-27 | 56 | 73.89d | 0d | Mi calendario GDP |  |  |  |
| 58 | 1.3.2.3 | Impl. Requisitos prioridad 3 50% |  | 294h | 2019-08-27 | 2019-12-10 | 57 | 73.89d | 0d | Mi calendario GDP | DESARROLLADOR1 | 294h | 3,528 |
| 59 | 1.1.3.2.6 | Modelo funcional 3 | milestone | 0h | 2019-12-10 | 2019-12-10 | 58 | 73.89d | 0d | Mi calendario GDP |  |  |  |
| 60 | 1.4 | **Fase de Test 20%** |  | 86.33d | 2019-09-26 | 2020-01-29 |  | 0d |  | Mi calendario GDP |  | 568.75h | 10,447.5 |
| 61 | 1.4.1 | Pruebas unitarias Módulo 1 40% |  | 367.5h | 2019-09-26 | 2019-12-06 | 51 | 0d |  | Mi calendario GDP | Analistas1&2 [50%] | 183.75h | 3,307.5 |
| 62 | 1.1.4.2 | Checklist PU M1 |  | 280h | 2019-12-06 | 2020-01-29 | 61 | 66.89d |  | Mi calendario GDP |  |  |  |
| 63 | 1.4.2 | Pruebas unitarias Módulo 2 30% |  | 210h | 2019-12-10 | 2020-01-20 | 59 | 73.89d | 0d | Mi calendario GDP | Analistas1&2; Team leader [50%] | 105h | 2,100 |
| 64 | 1.1.4.4 | Checklist PU M2 | milestone | 0h | 2020-01-20 | 2020-01-20 | 63 | 73.89d |  | Mi calendario GDP |  |  |  |
| 65 | 1.4.3 | Pruebas integración SW 10% |  | 210h | 2019-12-06 | 2020-01-16 | 61 | 0d |  | Mi calendario GDP | Analistas1&2 | 210h | 3,780 |
| 66 | 1.1.4.6 | Checklist integración | milestone | 0h | 2020-01-16 | 2020-01-16 | 65 | 76.22d |  | Mi calendario GDP |  |  |  |
| 67 | 1.4.4 | Pruebas arquitectura 20% |  | 46.67h | 2020-01-16 | 2020-01-24 | 65 | 0d |  | Mi calendario GDP | Analistas1&2 [150%] | 70h | 1,260 |
| 68 | 1.1.4.8 | Documentación pruebas arquitectura | milestone | 0h | 2020-01-24 | 2020-01-24 | 67 | 70d |  | Mi calendario GDP |  |  |  |
| 69 | 1.5 | **Fase de Implantación 5%** |  | 70d | 2020-01-24 | 2020-05-01 |  | 0d |  | Mi calendario GDP |  | 726.25h | 13,650 |
| 70 | 1.5.1 | Pruebas implantación 60% |  | 276.35h | 2020-01-24 | 2020-04-08 | 67 | 0d |  | Mi calendario GDP | DESARROLLADOR2&3 [200%]; DESARROLLADOR1 | 490h | 9,240 |
| 71 | 1.1.5.2 | Documentación pruebas implantación | milestone | 0h | 2020-04-08 | 2020-04-08 | 70 | 17.27d |  | Mi calendario GDP |  |  |  |
| 72 | 1.5.2 | Migración del sistema 15% |  | 59.5h | 2020-04-08 | 2020-04-27 | 70 | 0d |  | Mi calendario GDP | DESARROLLADOR2&3 [200%]; DESARROLLADOR1 | 87.5h | 1,470 |
| 73 | 1.1.5.4 | Dossier de migración | milestone | 0h | 2020-04-27 | 2020-04-27 | 72 | 4.2d |  | Mi calendario GDP |  |  |  |
| 74 | 1.5.3 | Pruebas de integridad de datos cliente 5% |  | 23.47h | 2020-04-27 | 2020-05-01 | 72 | 0d |  | Mi calendario GDP | DESARROLLADOR2&3 [200%]; DESARROLLADOR1 | 43.75h | 840 |
| 75 | 1.1.5.6 | Checklist PIDC | milestone | 0h | 2020-05-01 | 2020-05-01 | 74 | 0d |  | Mi calendario GDP |  |  |  |
| 76 | 1.5.4 | Formaciones 20% |  | 105h | 2020-01-28 | 2020-02-17 | 70SS+2d | 54d |  | Mi calendario GDP | Team leader | 105h | 2,100 |
